# manual schedule

Schedule from MS Project, 2019-04-29 to 2019-05-10.

## Calendars

- Manual calendar 7 hrs: Mon-Fri 07:00-12:00, 13:00-15:00; Sat-Sun off.

## Resources

| Resource |
| --- |
| Layout crew |
| Side 1 A |
| Side 1 B |
| Electrical |
| Side 2 A |
| Side 2 B |
| Painter |
| Coordination |

## Schedule

| ID | WBS | Task | Duration | Start | Finish | Predecessors | Total slack | Free slack | Constraint |
| --- | --- | --- | --- | --- | --- | --- | --- | --- | --- |
| 2 | 1 | Move board to position | 0.3d | 2019-04-29 08:00 | 2019-04-29 10:24 |  | 2.5d | 0d | start no earlier than 2019-04-29 08:00 |
| 3 | 2 | Place and drill board to studs | 5.5d | 2019-04-29 10:24 | 2019-05-07 13:24 | 2 | 2.5d |  | start no earlier than 2019-04-29 08:00 |
| 5 | 3 | Position robot | 0.17d | 2019-04-29 08:00 | 2019-04-29 09:21 |  | 0d |  | start no earlier than 2019-04-29 08:00 |
| 6 | 4 | Pick up and secure board | 0.36d | 2019-04-29 09:21 | 2019-04-29 13:14 | 5 | 0d |  |  |
| 7 | 5 | Transport board to position | 0.35d | 2019-04-29 13:14 | 2019-04-30 08:02 | 6 | 0d |  |  |
| 8 | 6 | Install board | 0.29d | 2019-04-30 08:02 | 2019-04-30 10:21 | 7 | 0d |  |  |
| 9 | 7 | Drill board to studs | 7.13d | 2019-04-30 10:21 | 2019-05-10 11:24 | 8 | 0d |  |  |
| 12 | 8 | **Apt 4** | 3.85d | 2019-04-29 08:00 | 2019-05-03 10:50 |  | 4.45d |  |  |
| 13 | 8.1 | Layout | 8.1min | 2019-04-29 08:00 | 2019-04-29 08:08 |  | 4.45d | 0d |  |
| 14 | 8.2 | First side drywall | 10.6h | 2019-04-29 08:08 | 2019-04-30 11:44 | 13 | 4.45d | 0d |  |
| 15 | 8.3 | Electrical installation | 4h | 2019-04-30 11:44 | 2019-05-01 08:44 | 14 | 4.45d | 0d |  |
| 16 | 8.4 | Second side drywall | 9.1h | 2019-05-01 08:44 | 2019-05-02 10:50 | 15 | 4.45d | 0d |  |
| 17 | 8.5 | Finishes | 7h | 2019-05-02 10:50 | 2019-05-03 10:50 | 16 | 4.45d |  |  |
| 20 | 9 | **Apt 4, 5, 6** | 6.65d | 2019-04-29 08:00 | 2019-05-08 13:14 |  | 1.65d |  |  |
| 21 | 9.1 | Coordination | 1.15h | 2019-04-29 08:00 | 2019-04-29 09:09 |  | 1.78d | 0d |  |
| 22 | 9.2 | Layout Apt 4 | 8.1min | 2019-04-29 09:09 | 2019-04-29 09:17 | 21 | 1.78d | 0d |  |
| 23 | 9.3 | Layout Apt 5 | 6.8min | 2019-04-29 09:17 | 2019-04-29 09:23 | 22 | 3.08d | 0d |  |
| 24 | 9.4 | Layout Apt 6 | 6.8min | 2019-04-29 09:23 | 2019-04-29 09:30 | 23 | 3.08d | 1.3d |  |
| 25 | 9.5 | First side drywall Apt 4 | 10.6h | 2019-04-29 09:17 | 2019-04-30 13:53 | 22 | 1.65d | 0d |  |
| 26 | 9.6 | First side drywall Apt 6 | 9.75h | 2019-04-30 13:53 | 2019-05-02 08:38 | 25, 24 | 1.65d | 0d |  |
| 27 | 9.7 | First side drywall Apt 5 | 16.2h | 2019-04-29 09:23 | 2019-05-01 11:35 | 23 | 3.16d | 0.98d |  |
| 28 | 9.8 | Electrical installation Apt 4 | 4h | 2019-04-30 13:53 | 2019-05-01 09:53 | 25 | 2.36d | 0.72d |  |
| 29 | 9.9 | Electrical installation Apt 6 | 3.8h | 2019-05-02 08:38 | 2019-05-02 13:26 | 26, 28 | 2.18d | 0d |  |
| 30 | 9.10 | Electrical installation Apt 5 | 2.5h | 2019-05-02 13:26 | 2019-05-03 07:56 | 27, 29 | 2.18d | 0d |  |
| 31 | 9.11 | Second side drywall Apt 4 | 9.1h | 2019-05-02 08:38 | 2019-05-03 10:44 | 28, 26 | 1.65d | 0d |  |
| 32 | 9.12 | Second side drywall Apt 6 | 8.5h | 2019-05-03 10:44 | 2019-05-06 13:14 | 31, 29 | 1.65d | 0d |  |
| 33 | 9.13 | Second side drywall Apt 5 | 14h | 2019-05-03 07:56 | 2019-05-07 07:56 | 30 | 2.18d | 0.54d |  |
| 34 | 9.14 | Finishes 4 | 7h | 2019-05-03 10:44 | 2019-05-06 10:44 | 31 | 1.83d | 0.19d |  |
| 35 | 9.15 | Finishes 6 | 7h | 2019-05-06 13:14 | 2019-05-07 13:14 | 32, 34 | 1.65d | 0d |  |
| 36 | 9.16 | Finishes 5 | 7h | 2019-05-07 13:14 | 2019-05-08 13:14 | 33, 35 | 1.65d |  |  |
