# robot schedule

Schedule from MS Project, 2019-04-29 to 2019-05-08.

## Calendars

- Manual calendar 7 hrs: Mon-Fri 07:00-12:00, 13:00-15:00; Sat-Sun off.
- Copy of Manual calendar 7 hrs: Mon-Fri 07:00-23:00; Sat-Sun off.

## Resources

| Resource |
| --- |
| Layout crew |
| Side 1 A |
| Side 1 B |
| Electrical |
| Side 2 A |
| Side 2 B |
| Painter |
| Coordination |

## Schedule

| ID | WBS | Task | Duration | Start | Finish | Predecessors | Total slack | Free slack | Constraint | Calendar |
| --- | --- | --- | --- | --- | --- | --- | --- | --- | --- | --- |
| 2 | 1 | Move board to position | 0.3d | 2019-04-29 08:00 | 2019-04-29 10:24 |  | 1.07d | 0d | start no earlier than 2019-04-29 08:00 |  |
| 3 | 2 | Place and drill board to studs | 5.5d | 2019-04-29 10:24 | 2019-05-07 13:24 | 2 | 1.07d |  | start no earlier than 2019-04-29 08:00 |  |
| 5 | 3 | Position robot | 0.33d | 2019-04-29 08:00 | 2019-04-29 10:38 |  | 0d |  | start no earlier than 2019-04-29 08:00 |  |
| 6 | 4 | Pick up and secure board | 0.5d | 2019-04-29 10:38 | 2019-04-30 07:38 | 5 | 0d |  |  |  |
| 7 | 5 | Transport board to position | 0.33d | 2019-04-30 07:38 | 2019-04-30 10:16 | 6 | 0d |  |  |  |
| 8 | 6 | Install board | 0.5d | 2019-04-30 10:16 | 2019-05-01 07:16 | 7 | 0d |  |  |  |
| 9 | 7 | Drill board to studs | 4.64d | 2019-05-01 07:16 | 2019-05-08 09:24 | 8 | 0d |  |  |  |
| 12 | 8 | **Apt 4** | 3.38d | 2019-04-29 08:00 | 2019-05-02 15:00 |  | 2.87d |  |  |  |
| 13 | 8.1 | Layout | 8.1min | 2019-04-29 08:00 | 2019-04-29 08:08 |  | 2.87d | 0d |  |  |
| 14 | 8.2 | First side drywall studs + cut | 8.2h | 2019-04-29 08:08 | 2019-04-30 09:20 | 13 | 2.87d | 0d |  |  |
| 15 | 8.3 | *Robotic drywall | 2.62h | 2019-04-30 09:20 | 2019-04-30 11:57 | 14 | 6.24d | 0d |  | Copy of Manual calendar 7 hrs |
| 16 | 8.4 | Electrical installation | 4h | 2019-04-30 11:57 | 2019-05-01 08:57 | 15 | 2.74d | 0d |  |  |
| 17 | 8.5 | Second side drywall | 4.4h | 2019-05-01 08:57 | 2019-05-01 14:21 | 16 | 2.74d | 0d |  |  |
| 18 | 8.6 | *Robotic drywall | 2.1h | 2019-05-01 14:21 | 2019-05-01 16:27 | 17 | 7.12d | 0.82d |  | Copy of Manual calendar 7 hrs |
| 19 | 8.7 | Finishes | 7h | 2019-05-02 07:00 | 2019-05-02 15:00 | 18 | 2.92d |  |  |  |
| 21 | 9 | **Apt 4, 5, 6** | 5.12d | 2019-04-29 08:00 | 2019-05-06 15:00 |  | 0.94d |  |  |  |
| 22 | 9.1 | Coordination | 1.15h | 2019-04-29 08:00 | 2019-04-29 09:09 |  | 0.94d | 0d |  |  |
| 23 | 9.2 | Layout Apt 4 | 8.1min | 2019-04-29 09:09 | 2019-04-29 09:17 | 22 | 0.94d | 0d |  |  |
| 24 | 9.3 | Layout Apt 5 | 6.8min | 2019-04-29 09:17 | 2019-04-29 09:23 | 23 | 1.71d | 0d |  |  |
| 25 | 9.4 | Layout Apt 6 | 6.8min | 2019-04-29 09:23 | 2019-04-29 09:30 | 24 | 1.99d | 1d |  |  |
| 26 | 9.5 | First side drywall 4 manual | 8.2h | 2019-04-29 09:17 | 2019-04-30 10:29 | 23 | 0.94d | 0d |  |  |
| 27 | 9.6 | First side drywall 5 manual | 12.6h | 2019-04-29 09:23 | 2019-05-01 07:59 | 24 | 1.71d | 0.56d |  |  |
| 28 | 9.7 | First side drywall 6 manual | 7.6h | 2019-04-30 10:29 | 2019-05-01 11:05 | 25, 26 | 0.99d | 0d |  |  |
| 29 | 9.8 | *First side drywall 4 robot | 2.62h | 2019-04-30 10:29 | 2019-04-30 13:06 | 26 | 2.06d | 0d |  | Copy of Manual calendar 7 hrs |
| 30 | 9.9 | *First side drywall 6 robot | 2.4h | 2019-05-01 11:05 | 2019-05-01 13:29 | 28, 29 | 2.13d | 0d |  | Copy of Manual calendar 7 hrs |
| 31 | 9.10 | *First side drywall 5 robot | 4h | 2019-05-01 13:29 | 2019-05-01 17:29 | 27, 30 | 3.28d | 0.97d |  | Copy of Manual calendar 7 hrs |
| 32 | 9.11 | Electrical installation Apt 4 | 4h | 2019-04-30 13:06 | 2019-05-01 09:06 | 29 | 0.94d | 0d |  |  |
| 33 | 9.12 | Electrical installation Apt 6 | 3.8h | 2019-05-01 13:29 | 2019-05-02 09:17 | 30, 32 | 1d | 0d |  |  |
| 34 | 9.13 | Electrical installation Apt 5 | 2.5h | 2019-05-02 09:17 | 2019-05-02 11:47 | 31, 33 | 1.18d | 0d |  |  |
| 35 | 9.14 | Second side drywall 4 manual | 4.4h | 2019-05-01 09:06 | 2019-05-01 14:30 | 32 | 0.94d | 0d |  |  |
| 36 | 9.15 | Second side drywall 6 manual | 4.1h | 2019-05-02 09:17 | 2019-05-02 14:23 | 33, 35 | 1d | 0d |  |  |
| 37 | 9.16 | Second side drywall 5 manual | 6.8h | 2019-05-02 11:47 | 2019-05-03 11:35 | 34 | 1.18d | 0d |  |  |
| 38 | 9.17 | *Second side drywall 4 robot | 2.62h | 2019-05-01 14:30 | 2019-05-01 17:07 | 35 | 3.03d | 0.73d |  | Copy of Manual calendar 7 hrs |
| 39 | 9.18 | *Second side drywall 6 robot | 2h | 2019-05-02 14:23 | 2019-05-02 16:23 | 36, 38 | 3.13d | 0.83d |  | Copy of Manual calendar 7 hrs |
| 40 | 9.19 | *Second side drywall 5 robot | 3.3h | 2019-05-03 11:35 | 2019-05-03 14:53 | 37, 39 | 3.31d | 1.01d |  | Copy of Manual calendar 7 hrs |
| 41 | 9.20 | Finishes 4 | 7h | 2019-05-02 07:00 | 2019-05-02 15:00 | 38 | 1.18d | 0d |  |  |
| 42 | 9.21 | Finishes 6 | 7h | 2019-05-03 07:00 | 2019-05-03 15:00 | 39, 41 | 1.18d | 0d |  |  |
| 43 | 9.22 | Finishes 5 | 7h | 2019-05-06 07:00 | 2019-05-06 15:00 | 40, 42 | 1.18d |  |  |  |

| ID | WBS | Task | Duration | Start | Finish | Predecessors | Total slack | Free slack |
| --- | --- | --- | --- | --- | --- | --- | --- | --- |
| 46 | 10 | **Apt 4, 5, 6 (prefab)** | 4.12d | 2019-04-29 08:00 | 2019-05-03 13:57 |  | 2.18d |  |
| 47 | 10.1 | Coordination | 2.3h | 2019-04-29 08:00 | 2019-04-29 10:18 |  | 2.18d | 0d |
| 48 | 10.2 | Layout Apt 4 | 8.1min | 2019-04-29 10:18 | 2019-04-29 10:26 | 47 | 2.18d | 0d |
| 49 | 10.3 | Layout Apt 5 | 6.8min | 2019-04-29 10:26 | 2019-04-29 10:32 | 48 | 3.04d | 0d |
| 50 | 10.4 | Layout Apt 6 | 6.8min | 2019-04-29 10:32 | 2019-04-29 10:39 | 49 | 3.9d | 1.09d |
| 51 | 10.5 | Load panels Ap.4 | 0.56d | 2019-04-29 10:26 | 2019-04-30 07:54 | 48 | 2.18d | 0d |
| 52 | 10.6 | Load panels Ap. 5 | 0.56d | 2019-04-30 07:54 | 2019-04-30 13:23 | 49, 51 | 2.5d | 0d |
| 53 | 10.7 | Load panels Ap. 6 | 0.56d | 2019-04-30 13:23 | 2019-05-01 09:52 | 50, 52 | 2.81d | 0.14d |
| 54 | 10.8 | Install frames and boards Ap. 4 | 0.63d | 2019-04-30 07:54 | 2019-04-30 13:57 | 51 | 2.18d | 0d |
| 55 | 10.9 | Install frames and boards Ap. 5 | 0.63d | 2019-04-30 13:57 | 2019-05-01 10:59 | 52, 54 | 2.43d | 0d |
| 56 | 10.10 | Install frames and boards Ap. 6 | 0.63d | 2019-05-01 10:59 | 2019-05-02 09:02 | 53, 55 | 2.67d | 0.49d |
| 57 | 10.11 | Finishes 4 | 7h | 2019-04-30 13:57 | 2019-05-01 13:57 | 54 | 2.18d | 0d |
| 58 | 10.12 | Finishes 5 | 7h | 2019-05-01 13:57 | 2019-05-02 13:57 | 55, 57 | 2.18d | 0d |
| 59 | 10.13 | Finishes 6 | 7h | 2019-05-02 13:57 | 2019-05-03 13:57 | 56, 58 | 2.18d |  |
